# Thesisfi

Schedule from MS Project, 2023-07-17 to 2024-06-28, status date 2024-05-20, A marks actual dates.

## Calendars

- Thesis calander: Mon-Fri 08:00-12:00, 13:00-17:00; Sat-Sun off. Exceptions (off unless hours are given): 2023-12-22 to 2024-01-07 (Christmas holiday), 2024-01-08 to 2024-01-30 (Exam), 2024-01-31 to 2024-02-11 (Sem break), 2024-03-29 to 2024-04-02 (Easter), 2024-04-03 08:00-12:00, 13:00-17:00, 2024-04-04 to 2024-04-14 (Easter), 2024-05-27 to 2024-06-10 (Exam).

## Resources

| Resource |
| --- |
| Jai |
| Nicholas |
| VSC |
| Slurm |
| Personal device |

## Schedule

| ID | Task | Type | Duration | Start | Finish | Predecessors | Complete | Remaining | Total slack | Free slack | Resources | Work | Actual work |
| --- | --- | --- | --- | --- | --- | --- | --- | --- | --- | --- | --- | --- | --- |
| 1 | Literature review |  | 82d | 2023-07-17 A | 2023-11-07 A |  | 100% |  |  |  | Jai | 643h | 643h |
| 2 | Platosim software download and setup |  | 26d | 2023-10-16 A | 2023-11-20 A | 1SS | 100% |  |  |  | Jai; Nicholas; Personal device | 624h | 624h |
| 3 | Platosim running successfully | milestone | 0d | 2023-11-20 A | 2023-11-20 A | 2 | 100% |  |  |  |  |  |  |
| 4 | Parameter space development |  | 50d | 2023-10-16 A | 2024-02-12 A | 1SS | 100% |  |  |  | Jai | 400h | 400h |
| 5 | Noiseless light curves as an input for platosim |  | 14d | 2023-12-18 A | 2024-02-23 A | 2, 4FF | 100% |  |  |  | Jai; Personal device | 224h | 224h |
| 6 | Check for no transit scenarios |  | 10d? | 2024-02-19 A | 2024-03-01 A | 5FF | 100% |  |  |  | Jai; Personal device | 160h | 160h |
| 7 | Magnitude bins |  | 5d | 2024-03-05 A | 2024-03-11 A | 4 | 100% |  |  |  | Jai | 40h | 40h |
| 8 | Parameter space finalized | milestone | 0d | 2024-03-11 A | 2024-03-11 A | 7 | 100% |  |  |  |  |  |  |
| 9 | VSC account setup |  | 1d | 2024-03-11 A | 2024-03-11 A |  | 100% |  |  |  | Jai; VSC | 16h | 16h |
| 10 | simulation bash script |  | 1d | 2024-03-12 A | 2024-03-12 A | 9, 7 | 100% |  |  |  | Jai | 8h | 8h |
| 11 | initial test run |  | 5d | 2024-03-13 A | 2024-03-19 A | 10 | 100% |  |  |  | Jai; Nicholas | 80h | 80h |
| 12 | Simulate the entire parameter space |  | 9d | 2024-03-20 A | 2024-04-15 A | 11 | 100% |  |  |  | Jai; Nicholas; VSC | 216h | 216h |
| 13 | detrending stiching |  | 6d | 2024-03-18 A | 2024-03-25 A | 11SS | 100% |  |  |  | Jai; Nicholas | 96h | 96h |
| 14 | Merging setup |  | 4d | 2024-03-20 A | 2024-03-25 A | 11 | 100% |  |  |  | Jai; Nicholas | 64h | 64h |
| 15 | Data obtained | milestone | 0d | 2024-04-15 A | 2024-04-15 A | 12 | 100% |  |  |  |  |  |  |
| 16 | Applying the scripts to obtained data |  | 1d | 2024-04-15 A | 2024-04-15 A | 13, 14 | 100% |  |  |  | Jai; Nicholas | 16h | 16h |
| 17 | using tls to detect exoplanets from the data of all targets |  | 13d | 2024-04-16 A | 2024-05-02 A | 16 | 100% |  |  |  | Jai; Slurm | 208h | 208h |
| 18 | Pipeline to detect transits in noisy light curves |  | 13d | 2024-05-03 A | 2024-05-21 A | 17 | 100% |  |  |  | Jai; Personal device | 208h | 208h |
| 19 | Write a script that uses Bayesian statistics to determine the detection probabilities |  | 8d | 2024-05-10 | 2024-05-21 | 18FF |  |  | 17d | 0d | Jai | 64h |  |
| 20 | Results and analysis done | milestone | 0d | 2024-05-21 A | 2024-05-21 | 19 | 90% | 0d | 17d |  |  |  |  |
| 21 | Scientific analysis of obtained results and conclusion |  | 14d | 2024-06-11 A | 2024-06-28 | 19FF, 17 | 40% | 8.4d | 0d |  | Jai | 112h | 44.8h |
| 22 | writing the Thesis report |  | 68d | 2024-02-27 A | 2024-06-28 | 5, 21FF | 30% | 47.6d | 0d |  | Jai | 544h | 163.2h |
| 23 | Project complete | milestone | 0d | 2024-06-28 | 2024-06-28 | 22 |  |  | 0d |  |  |  |  |
